# Gantt_tabell_G26

How a schedule from MS Project changed from version to version. A marks actual dates.

## Version 1 (saved 2026-03-15)

Note of the change: Merge pull request #1 from LOG650/Fase-2---Prosjektsstyringsplan

| ID | WBS | Task | Duration | Start | Finish | Predecessors | Total float |
| --- | --- | --- | --- | --- | --- | --- | --- |
| 1 | 1 | **1.0 Initiering** | 22d | 2026-01-12 | 2026-02-10 |  | 0d |
| 2 |  | 1.1 Prosjektavklaring | 7d | 2026-01-12 | 2026-01-20 |  | 0d |
| 3 |  | 1.2 Proposal | 15d | 2026-01-21 | 2026-02-10 | 2 | 0d |
| 4 |  | 1.3 Litteratursøk | 7d | 2026-01-21 | 2026-01-29 | 2 | 8d |
| 5 |  | 1.4 Datatilgang avklart | 15d | 2026-01-21 | 2026-02-10 | 2 | 0d |
| 6 | 2 | **2.0 Planlegging** | 27d | 2026-02-11 | 2026-03-19 |  | 0d |
| 7 |  | 2.1 Prosjektsstyringsplan | 20d | 2026-02-11 | 2026-03-10 | 3, 4, 5 | 0d |
| 8 |  | 2.2 Kravspesifikasjon | 10d | 2026-02-11 | 2026-02-24 | 3, 5 | 10d |
| 9 |  | 2.3 Forskningsplan | 7d | 2026-03-11 | 2026-03-19 | 7, 8 | 0d |
| 10 |  | 2.4 WBS og Gantt | 7d | 2026-03-11 | 2026-03-19 | 7 | 0d |
| 11 | 3 | **3.0 Gjennomføring** | 39d | 2026-03-20 | 2026-05-13 |  | 0d |
| 12 |  | 3.1 Datainnhenting | 7d | 2026-03-20 | 2026-03-30 | 9, 10 | 0d |
| 13 |  | 3.2 EDA | 7d | 2026-03-31 | 2026-04-08 | 12 | 0d |
| 14 |  | 3.3 SARIMA-modellering | 15d | 2026-04-09 | 2026-04-29 | 13 | 0d |
| 15 |  | 3.4 Varslingslogikk | 15d | 2026-04-09 | 2026-04-29 | 13 | 0d |
| 16 |  | 3.5 Validering | 10d | 2026-04-30 | 2026-05-13 | 14, 15 | 0d |
| 17 |  | 3.6 Rapportskriving | 15d | 2026-03-31 | 2026-04-20 | 12 | 5d |
| 18 | 4 | **4.0 Avslutning** | 14d | 2026-05-14 | 2026-06-02 |  | 0d |
| 19 |  | 4.1 Sluttrapport | 7d | 2026-05-14 | 2026-05-22 | 16, 17 | 0d |
| 20 |  | 4.2 KI-dokumentasjon | 6d | 2026-05-25 | 2026-06-01 | 19 | 0d |
| 21 |  | 4.3 Muntlig eksamen | 1d | 2026-06-02 | 2026-06-02 | 20, 19 | 0d |

## Version 2 (saved 2026-05-25)

Note of the change: Små justeringer

Last finish stays 2026-06-02.

Removed: 5 1.4 Datatilgang avklart

Changed:

| ID | Task | Predecessors | Other |
| --- | --- | --- | --- |
| 2 | 1.1 Prosjektavklaring (proposal) |  | was named 1.1 Prosjektavklaring |
| 3 | 1.2 Litteratursøk |  | was named 1.2 Proposal |
| 4 | 1.3 Datatilgang avklart |  | was named 1.3 Litteratursøk |
| 6 | 2.1 Prosjektsstyringsplan | 3, 4, 1.4 Datatilgang avklart → 3, 4 |  |
| 7 | 2.2 Kravspesifikasjon | 3, 1.4 Datatilgang avklart → 3 |  |
| 11 | 3.1 Datainnhenting og klargjøring |  | was named 3.1 Datainnhenting |
| 13 | 3.3 Gap-deteksjonslogikk |  | was named 3.3 SARIMA-modellering |
| 15 | 3.5 Validering og testing |  | was named 3.5 Validering |
| 16 | 3.6 Rapportskriving (løpende) |  | was named 3.6 Rapportskriving |
| 20 | 4.3 Muntlig presentasjon |  | was named 4.3 Muntlig eksamen |
